# Rocket_Av Schedule

Schedule from MS Project, 2016-11-05 to 2016-12-02.
Portland State University

## Calendars

- Copy of 24 Hours: Mon-Sun 08:00-16:00. Exceptions (off unless hours are given): 2016-11-24 to 2016-11-25 (Thanksgiving).

## Resources

| Resource |
| --- |
| Aaron |
| Minh |
| Andy |
| Danny |
| Andrew |

## Schedule

| ID | WBS | Task | Type | Duration | Start | Finish | Predecessors | Total slack | Free slack | Constraint | Resources | Work |
| --- | --- | --- | --- | --- | --- | --- | --- | --- | --- | --- | --- | --- |
| 1 | 1 | Start | milestone | 0d | 2016-11-05 | 2016-11-05 |  | 26d |  |  |  |  |
| 2 | 2 | **Finalize Schematic** |  | 3d | 2016-11-05 | 2016-11-08 |  | 23d |  |  |  | 16h |
| 3 | 2.1 | Check All Connections |  | 1d | 2016-11-05 | 2016-11-05 |  | 25d | 2d |  | Aaron | 8h |
| 4 | 2.2 | Reorganize Schematic |  | 1d | 2016-11-05 | 2016-11-05 |  | 25d | 2d |  | Danny | 8h |
| 5 | 2.3 | Check for Requirement Compliance | milestone | 0d | 2016-11-08 | 2016-11-08 | 4, 3 | 23d |  | start no earlier than 2016-11-08 | Aaron; Andrew; Andy; Danny; Minh |  |
| 6 | 3 | **Design Layout** |  | 4d | 2016-11-05 | 2016-11-08 |  | 2d |  |  |  | 56h |
| 7 | 3.1 | Insert Footprints |  | 1d | 2016-11-05 | 2016-11-05 |  | 2d | 0d |  | Andy | 8h |
| 8 | 3.2 | Verify Footprints |  | 1d | 2016-11-06 | 2016-11-06 | 7 | 2d | 0d |  | Andy | 8h |
| 9 | 3.3 | Generate BOM |  | 1d | 2016-11-07 | 2016-11-07 | 8 | 2d | 0d |  | Andy | 8h |
| 10 | 3.4 | Layout Board |  | 2d | 2016-11-07 | 2016-11-08 | 8 | 2d | 0d |  | Danny; Minh | 32h |
| 11 | 3.5 | Review Layout | milestone | 0d | 2016-11-08 | 2016-11-08 | 10 | 2d | 0d |  | Aaron; Andy; Danny; Minh; Andrew |  |
| 12 | 4 | **Build Board** |  | 13d | 2016-11-08 | 2016-11-20 |  | 2d |  |  |  | 24h |
| 13 | 4.1 | Order Board Components |  | 1d | 2016-11-08 | 2016-11-08 | 9 | 2d | 0d |  | Aaron | 8h |
| 14 | 4.2 | Components Shipping |  | 5d | 2016-11-09 | 2016-11-13 | 13 | 2d | 0d |  |  |  |
| 15 | 4.3 | Order Board |  | 1d | 2016-11-09 | 2016-11-09 | 11 | 2d | 0d |  | Andy | 8h |
| 16 | 4.4 | Board Shipping |  | 10d | 2016-11-10 | 2016-11-19 | 15 | 2d | 0d |  |  |  |
| 17 | 4.5 | Assemble Board |  | 1d | 2016-11-20 | 2016-11-20 | 14, 16 | 2d | 0d |  | Andy | 8h |
| 18 | 4.6 | Board Built | milestone | 0d | 2016-11-20 | 2016-11-20 | 17 | 10d |  |  |  |  |
| 19 | 5 | **Develop UI** |  | 5d | 2016-11-09 | 2016-11-13 |  | 12d |  |  |  | 96h |
| 20 | 5.1 | Design Concept |  | 1d | 2016-11-09 | 2016-11-09 | 11 | 12d | 0d |  | Aaron; Minh | 16h |
| 21 | 5.2 | Code Data Acquisition |  | 3d | 2016-11-10 | 2016-11-12 | 20 | 12d | 0d |  | Aaron | 24h |
| 22 | 5.3 | Code Interface |  | 3d | 2016-11-10 | 2016-11-12 | 20 | 12d | 0d |  | Minh | 24h |
| 23 | 5.4 | Test UI |  | 1d | 2016-11-13 | 2016-11-13 | 21, 22 | 12d |  |  | Aaron; Andy; Danny; Minh | 32h |
| 24 | 6 | **Program Microcontroller** |  | 9d | 2016-11-14 | 2016-11-22 |  | 2d |  |  |  | 184h |
| 25 | 6.1 | Test Microcontroller Interface |  | 2d | 2016-11-14 | 2016-11-15 | 14 | 2d | 0d |  | Aaron | 16h |
| 26 | 6.2 | Create General Program Conceptual Architecture |  | 2d | 2016-11-16 | 2016-11-17 | 25 | 2d | 0d |  | Aaron; Andy; Danny; Minh | 64h |
| 27 | 6.3 | Code SPI Interface |  | 3d | 2016-11-18 | 2016-11-20 | 26 | 2d |  |  | Danny | 24h |
| 28 | 6.4 | Code Data Storage |  | 3d | 2016-11-18 | 2016-11-20 | 26 | 2d |  |  | Aaron | 24h |
| 29 | 6.5 | Code Interrupts |  | 3d | 2016-11-18 | 2016-11-20 | 26 | 2d | 0d |  | Minh | 24h |
| 30 | 6.6 | Test Board |  | 2d | 2016-11-21 | 2016-11-22 | 27, 28, 29, 17 | 2d |  |  | Minh; Andy | 32h |

| ID | WBS | Task | Type | Duration | Start | Finish | Predecessors | Total slack | Constraint | Resources | Work |
| --- | --- | --- | --- | --- | --- | --- | --- | --- | --- | --- | --- |
| 31 | 7 | **Build Rocket** |  | 5d | 2016-11-21 | 2016-11-27 |  | 0d |  |  | 96h |
| 32 | 7.1 | Design Rocket |  | 1d | 2016-11-21 | 2016-11-21 |  | 0d | as late as possible | Aaron; Danny | 16h |
| 33 | 7.2 | Procure Rocket Materials |  | 1d | 2016-11-22 | 2016-11-22 | 32 | 0d | as late as possible | Danny | 8h |
| 34 | 7.3 | Build Rocket |  | 1d | 2016-11-23 | 2016-11-23 | 33 | 0d | start no earlier than 2016-11-23 | Danny | 8h |
| 35 | 7.4 | Test Rocket |  | 1d | 2016-11-26 | 2016-11-26 | 34 | 0d | as late as possible | Aaron; Andy; Danny; Minh | 32h |
| 36 | 7.5 | Integrate Avionics System Into Rocket |  | 1d | 2016-11-27 | 2016-11-27 | 35, 30 | 0d |  | Aaron; Andy; Danny; Minh | 32h |
| 37 | 8 | **Test Project** |  | 5d | 2016-11-28 | 2016-12-02 | 36, 23 | 0d |  |  | 160h |
| 38 | 8.1 | Test Flight |  | 1d | 2016-11-28 | 2016-11-28 |  | 0d |  | Aaron; Andy; Danny; Minh | 32h |
| 39 | 8.2 | Test UI and Data from Flight |  | 1d | 2016-11-29 | 2016-11-29 | 38 | 0d |  | Aaron; Andy; Danny; Minh | 32h |
| 40 | 8.3 | Troubleshoot |  | 3d | 2016-11-30 | 2016-12-02 | 39 | 0d |  | Aaron; Minh; Andy; Danny | 96h |
| 41 | 8.4 | Project Complete | milestone | 0d | 2016-12-02 | 2016-12-02 | 40 | 0d |  |  |  |
