# Rocket_Av Schedule

Schedule from MS Project, 2016-11-05 to 2016-12-09, A marks actual dates.
Portland State University

## Calendars

- Copy of 24 Hours: Mon-Sun 08:00-16:00. Exceptions (off unless hours are given): 2016-11-24 to 2016-11-25 (Thanksgiving).

## Resources

| Resource |
| --- |
| Aaron |
| Minh |
| Andy |
| Danny |
| Andrew |

## Schedule

| ID | WBS | Task | Type | Duration | Start | Finish | Complete | Actual start | Actual finish | Baseline start | Baseline finish | Baseline duration | Constraint | Resources | Work | Actual work |
| --- | --- | --- | --- | --- | --- | --- | --- | --- | --- | --- | --- | --- | --- | --- | --- | --- |
| 1 | 1 | Team 08: Rocket Avionics | milestone, manual | 0d | 2016-11-05 A | 2016-11-05 A | 100% |  |  | 2016-11-05 | 2016-11-05 |  |  |  |  |  |
| 2 | 2 | **Finalize Schematic** |  | 3d | 2016-11-05 A | 2016-11-08 A | 100% |  |  | 2016-11-05 | 2016-11-08 | 3d |  |  | 16h | 16h |
| 3 | 2.1 | Check All Connections | manual | 1d | 2016-11-05 A | 2016-11-05 A | 100% |  |  | 2016-11-05 | 2016-11-05 | 1d |  | Aaron | 8h | 8h |
| 4 | 2.2 | Reorganize Schematic | manual | 1d | 2016-11-05 A | 2016-11-05 A | 100% |  |  | 2016-11-05 | 2016-11-05 | 1d |  | Danny | 8h | 8h |
| 5 | 2.3 | Check for Requirement Compliance | milestone, manual | 0d | 2016-11-08 A | 2016-11-08 A | 100% |  |  | 2016-11-08 | 2016-11-08 |  | start no earlier than 2016-11-08 | Aaron; Andrew; Andy; Danny; Minh |  |  |
| 6 | 3 | **Design Layout** |  | 4d | 2016-11-05 A | 2016-11-08 | 100% |  | 2016-11-09 | 2016-11-05 | 2016-11-08 | 4d |  |  | 56h | 56h |
| 7 | 3.1 | Insert Footprints | manual | 1d | 2016-11-05 A | 2016-11-05 A | 100% |  |  | 2016-11-05 | 2016-11-05 | 1d |  | Andy | 8h | 8h |
| 8 | 3.2 | Verify Footprints | manual | 1d | 2016-11-06 A | 2016-11-06 A | 100% |  |  | 2016-11-06 | 2016-11-06 | 1d |  | Andy | 8h | 8h |
| 9 | 3.3 | Generate BOM | manual | 1d | 2016-11-07 A | 2016-11-07 A | 100% |  |  | 2016-11-07 | 2016-11-07 | 1d |  | Andy | 8h | 8h |
| 10 | 3.4 | Layout Board | manual | 2d | 2016-11-07 A | 2016-11-08 A | 100% |  |  | 2016-11-07 | 2016-11-08 | 2d |  | Danny; Minh | 32h | 32h |
| 11 | 3.5 | Review Layout | milestone, manual | 0d | 2016-11-09 A | 2016-11-09 A | 100% |  |  | 2016-11-08 | 2016-11-08 |  |  | Aaron; Andy; Danny; Minh; Andrew |  |  |
| 12 | 4 | **Build Board** |  | 25d | 2016-11-08 A | 2016-12-05 A | 100% |  |  | 2016-11-08 | 2016-11-20 | 13d |  |  | 120h | 120h |
| 13 | 4.1 | Order Board Components | manual | 1d | 2016-11-08 A | 2016-11-08 A | 100% |  |  | 2016-11-08 | 2016-11-08 | 1d |  | Aaron | 8h | 8h |
| 14 | 4.2 | Components Shipping | manual | 15d | 2016-11-09 A | 2016-11-23 A | 100% |  |  | 2016-11-09 | 2016-11-13 | 5d | finish no earlier than 2016-11-23 |  |  |  |
| 15 | 4.3 | Order Board | manual | 1d | 2016-11-09 A | 2016-11-09 A | 100% |  |  | 2016-11-09 | 2016-11-09 | 1d |  | Andy | 8h | 8h |
| 16 | 4.4 | Board Shipping | manual | 14d | 2016-11-10 A | 2016-11-23 A | 100% |  |  | 2016-11-10 | 2016-11-19 | 10d | finish no earlier than 2016-11-23 |  |  |  |
| 17 | 4.5 | Assemble Board | manual | 4d | 2016-12-01 A | 2016-12-04 A | 100% |  |  | 2016-11-20 | 2016-11-20 | 1d |  | Andy; Danny; Minh; Aaron | 104h | 104h |
| 18 | 4.6 | Board Built | milestone, manual | 0d | 2016-12-05 A | 2016-12-05 A | 100% |  |  | 2016-11-20 | 2016-11-20 |  |  |  |  |  |
| 19 | 5 | **Program Microcontroller** |  | 7d | 2016-11-29 | 2016-12-05 A | 100% | 2016-12-01 |  | 2016-11-14 | 2016-11-22 | 9d |  |  | 120h | 120h |
| 20 | 5.1 | Test Microcontroller Interface | manual | 1d | 2016-12-01 A | 2016-12-02 A | 100% |  |  | 2016-11-14 | 2016-11-15 | 2d | start no earlier than 2016-12-01 | Andy; Danny; Minh | 24h | 24h |
| 21 | 5.2 | Create General Program Conceptual Architecture | manual | 2d | 2016-12-02 A | 2016-12-03 A | 100% |  |  | 2016-11-16 | 2016-11-17 | 2d |  | Aaron; Danny | 32h | 32h |
| 22 | 5.3 | Code SPI Interface | manual | 3d | 2016-12-03 A | 2016-12-05 A | 100% |  |  | 2016-11-18 | 2016-11-20 | 3d |  | Aaron | 24h | 24h |
| 23 | 5.4 | Code Data Storage | manual | 3d | 2016-12-03 A | 2016-12-05 A | 100% |  |  | 2016-11-18 | 2016-11-20 | 3d |  | Aaron | 24h | 24h |
| 24 | 5.5 | Test Board | manual | 1d | 2016-12-05 A | 2016-12-05 A | 100% |  |  | 2016-11-21 | 2016-11-22 | 2d |  | Minh; Andy; Danny | 16h | 16h |

| ID | WBS | Task | Type | Duration | Start | Finish | Complete | Baseline start | Baseline finish | Baseline duration | Constraint | Resources | Work | Actual work |
| --- | --- | --- | --- | --- | --- | --- | --- | --- | --- | --- | --- | --- | --- | --- |
| 25 | 6 | **Build Rocket** |  | 11d | 2016-11-25 A | 2016-12-05 A | 100% | 2016-11-21 | 2016-11-27 | 5d |  |  | 96h | 96h |
| 26 | 6.1 | Design Rocket | manual | 1d | 2016-11-25 A | 2016-11-25 A | 100% | 2016-11-21 | 2016-11-21 | 1d | as late as possible | Aaron; Danny | 16h | 16h |
| 27 | 6.2 | Procure Rocket Materials | manual | 1d | 2016-11-28 A | 2016-11-28 A | 100% | 2016-11-22 | 2016-11-22 | 1d | as late as possible | Danny | 8h | 8h |
| 28 | 6.3 | Build Rocket | manual | 1d | 2016-11-29 A | 2016-11-29 A | 100% | 2016-11-23 | 2016-11-23 | 1d | start no earlier than 2016-11-23 | Danny | 8h | 8h |
| 29 | 6.4 | Test Rocket | manual | 1d | 2016-12-03 A | 2016-12-03 A | 100% | 2016-11-26 | 2016-11-26 | 1d | as late as possible | Aaron; Andy; Danny; Minh | 32h | 32h |
| 30 | 6.5 | Integrate Avionics System Into Rocket | manual | 1d | 2016-12-05 A | 2016-12-05 A | 100% | 2016-11-27 | 2016-11-27 | 1d |  | Aaron; Andy; Danny; Minh | 32h | 32h |
| 31 | 7 | **Test Project** |  | 3d? | 2016-12-06 A | 2016-12-09 A | 100% | 2016-11-28 | 2016-12-02 | 4d |  |  | 160h | 160h |
| 32 | 7.1 | Test Flights |  | 2d | 2016-12-07 A | 2016-12-08 A | 100% | 2016-11-28 | 2016-11-28 | 1d |  | Aaron; Andy; Danny; Minh | 64h | 64h |
| 33 | 7.2 | Test UI and Data from Flight |  | 2d | 2016-12-07 A | 2016-12-08 A | 100% | 2016-11-29 | 2016-11-29 | 1d | finish no earlier than 2016-12-08 | Aaron; Andy; Danny; Minh | 32h | 32h |
| 34 | 7.3 | Troubleshoot |  | 3d | 2016-12-06 A | 2016-12-08 A | 100% | 2016-11-30 | 2016-12-01 | 2d | finish no earlier than 2016-12-08 | Aaron; Minh; Andy; Danny | 64h | 64h |
| 35 | 7.4 | Project Complete | milestone, manual | 0d | 2016-12-09 A | 2016-12-09 A | 100% | 2016-12-02 | 2016-12-02 |  |  |  |  |  |
